# ShawTrust_SD_Master_Plan_v0.2

Schedule from MS Project, 2011-11-18 to 2011-12-22.
Sony Electronics, Inc.

## Calendars

- Standard: Mon-Fri 08:00-12:00, 13:00-17:00; Sat-Sun off.

## Resources

| Resource |
| --- |
| dungnm |
| hant21 |
| hungnm |
| phongtv |
| nhanld |
| phong |

## Schedule

| ID | WBS | Task | Duration | Start | Finish | Predecessors | Total slack | Resources | Work |
| --- | --- | --- | --- | --- | --- | --- | --- | --- | --- |
| 1 | 1 | **MockProject** | 24.87d | 2011-11-18 08:00 | 2011-12-22 15:57 |  | 0d |  | 1240.32h |
| 2 | 1.1 | **Initiation** | 1d | 2011-11-18 08:00 | 2011-11-18 17:00 |  | 0d |  |  |
| 3 | 1.1.1 | Project kick-off & introduction | 0.25d | 2011-11-18 08:00 | 2011-11-18 10:00 |  | 0d |  |  |
| 4 | 1.1.2 | Preparation & Study overview requirements | 0.5d | 2011-11-18 10:00 | 2011-11-18 15:00 | 3 | 0d |  |  |
| 5 | 1.1.3 | Requirement brainstorming | 0.25d | 2011-11-18 15:00 | 2011-11-18 17:00 | 4 | 0d |  |  |
| 6 | 1.2 | **Create document & Learning** | 7.6d | 2011-11-21 08:00 | 2011-11-30 13:48 |  | 0d |  | 248h |
| 7 | 1.2.1 | **Build up work flow for module** | 2d | 2011-11-21 08:00 | 2011-11-22 17:00 |  | 0d |  | 64h |
| 8 | 1.2.1.1 | Build up work flow for module: 6.1,6.6, 6.7, 6.8 | 1.5d | 2011-11-21 08:00 | 2011-11-22 12:00 | 5 | 0d | nhanld | 12h |
| 9 | 1.2.1.2 | Build up work flow for module: 6.2 | 2d | 2011-11-21 08:00 | 2011-11-22 17:00 | 8SS | 17.6d | dungnm | 16h |
| 10 | 1.2.1.3 | Build up work flow for module: 6.3 | 1.5d | 2011-11-21 08:00 | 2011-11-22 12:00 | 8SS | 18.1d | hungnm | 12h |
| 11 | 1.2.1.4 | Build up work flow for module: 6.4 | 1.5d | 2011-11-21 08:00 | 2011-11-22 12:00 | 8SS | 18.1d | hant21 | 12h |
| 12 | 1.2.1.5 | Build up work flow for module: 6.5 | 1.5d | 2011-11-21 08:00 | 2011-11-22 12:00 | 8SS | 18.1d | phongtv | 12h |
| 13 | 1.2.2 | Template for prototype | 1.5d | 2011-11-22 13:00 | 2011-11-23 17:00 | 8, 12 | 0d | nhanld | 12h |
| 14 | 1.2.3 | Create Q&A document, Rick and issues document | 0.5d | 2011-11-22 13:00 | 2011-11-22 17:00 | 13SS | 17.6d | dungnm | 4h |
| 15 | 1.2.4 | Create project plan, integrate work flow | 0.5d | 2011-11-22 13:00 | 2011-11-22 17:00 | 13SS, 14 | 17.6d | hant21 | 4h |
| 16 | 1.2.5 | Learning Spring dependency | 0.5d | 2011-11-22 13:00 | 2011-11-22 17:00 | 13SS | 17.6d | hungnm | 4h |
| 17 | 1.2.6 | Leaning Hibernate | 0.5d | 2011-11-22 13:00 | 2011-11-22 17:00 | 13SS, 16 | 17.6d | phongtv | 4h |
| 18 | 1.2.7 | **Build up prototype** | 1.5d | 2011-11-24 08:00 | 2011-11-25 12:00 |  | 0d |  | 60h |
| 19 | 1.2.7.1 | Build up prototype for module: 6.1,6.6, 6.7, 6.8 | 1.5d | 2011-11-24 08:00 | 2011-11-25 12:00 | 13, 18 | 0d | nhanld | 12h |
| 20 | 1.2.7.2 | Build up prototype for module: 6.2 | 1.5d | 2011-11-24 08:00 | 2011-11-25 12:00 | 19SS | 15.1d | dungnm | 12h |
| 21 | 1.2.7.3 | Build up prototype for module: 6.3 | 1.5d | 2011-11-24 08:00 | 2011-11-25 12:00 | 19SS | 15.1d | dungnm | 12h |
| 22 | 1.2.7.4 | Build up prototype for module: 6.4 | 1.5d | 2011-11-24 08:00 | 2011-11-25 12:00 | 19SS | 15.1d | hant21 | 12h |
| 23 | 1.2.7.5 | Build up prototype for module: 6.5 | 1.5d | 2011-11-24 08:00 | 2011-11-25 12:00 | 19SS | 15.1d | phongtv | 12h |
| 24 | 1.2.8 | Learning Spring dependency | 2d | 2011-11-25 13:00 | 2011-11-29 12:00 | 19, 23 | 0d | dungnm; hungnm | 32h |
| 25 | 1.2.9 | Learning Hibernate | 2d | 2011-11-25 13:00 | 2011-11-29 12:00 | 24SS | 13.1d | hant21; phongtv | 32h |
| 26 | 1.2.10 | Demo hibernate | 0.25d | 2011-11-29 13:00 | 2011-11-29 15:00 | 24, 25 | 0d | hant21; phong | 4h |
| 27 | 1.2.11 | Demo spring | 0.25d | 2011-11-29 15:00 | 2011-11-29 17:00 | 26 | 0d | dungnm; hungnm | 4h |
| 28 | 1.2.12 | Design database | 0.1d | 2011-11-30 08:00 | 2011-11-30 08:48 | 27 | 0d | dungnm; hungnm; nhanld; phongtv; hant21 | 4h |
| 29 | 1.2.13 | High level design | 0.5d | 2011-11-30 08:48 | 2011-11-30 13:48 | 28 | 0d | dungnm; hungnm; nhanld; phongtv; hant21 | 20h |

| ID | WBS | Task | Duration | Start | Finish | Predecessors | Total slack | Free slack | Resources | Work |
| --- | --- | --- | --- | --- | --- | --- | --- | --- | --- | --- |
| 30 | 1.3 | **Construction** | 12.02d | 2011-11-30 13:48 | 2011-12-16 13:57 |  | 0d |  |  | 864.32h |
| 31 | 1.3.1 | **Iteration 1 - Login, menu, contact, addresslookup** | 9d | 2011-11-30 13:48 | 2011-12-13 13:48 |  | 0d |  |  | 144h |
| 32 | 1.3.1.1 | **Logon-Logout, menu** | 3d | 2011-11-30 13:48 | 2011-12-05 13:48 |  | 0d |  | nhanld | 48h |
| 33 | 1.3.1.1.1 | Class, Sequence digaram | 0.5d | 2011-11-30 13:48 | 2011-12-01 08:48 | 29 | 0d |  | nhanld | 4h |
| 34 | 1.3.1.1.2 | Pseudo-code | 0.5d | 2011-12-01 08:48 | 2011-12-01 13:48 | 33 | 3d | 0d | nhanld | 4h |
| 35 | 1.3.1.1.3 | Prepare for Unit testing | 0.1d | 2011-12-01 13:48 | 2011-12-01 14:36 | 34 | 3d | 0d | nhanld | 0.8h |
| 36 | 1.3.1.1.4 | Code | 1.3d | 2011-12-01 14:36 | 2011-12-02 17:00 | 35 | 3d | 0d | nhanld | 10.4h |
| 37 | 1.3.1.1.5 | Self code review | 0.1d | 2011-12-05 08:00 | 2011-12-05 08:48 | 36 | 7.27d | 0d | nhanld | 0.8h |
| 38 | 1.3.1.1.6 | Peer code review | 0.1d | 2011-12-05 08:48 | 2011-12-05 09:36 | 37 | 7.27d | 0d | nhanld | 0.8h |
| 39 | 1.3.1.1.7 | Prepare UT script | 0.2d | 2011-12-05 09:36 | 2011-12-05 11:12 | 38 | 7.27d | 0d | nhanld | 1.6h |
| 40 | 1.3.1.1.8 | Perform UT and fix bug | 0.2d | 2011-12-05 11:12 | 2011-12-05 13:48 | 39 | 7.27d | 0d | nhanld | 1.6h |
| 41 | 1.3.1.2 | **Contact** | 3d | 2011-12-05 13:48 | 2011-12-08 13:48 |  | 3d |  | nhanld | 48h |
| 42 | 1.3.1.2.1 | Class, Sequence digaram | 0.5d | 2011-12-05 13:48 | 2011-12-06 08:48 | 40 | 7.27d | 0d | nhanld | 4h |
| 43 | 1.3.1.2.2 | Pseudo-code | 0.5d | 2011-12-06 08:48 | 2011-12-06 13:48 | 42 | 7.27d | 0d | nhanld | 4h |
| 44 | 1.3.1.2.3 | Prepare for Unit testing | 0.1d | 2011-12-06 13:48 | 2011-12-06 14:36 | 43 | 7.27d | 0d | nhanld | 0.8h |
| 45 | 1.3.1.2.4 | Code | 1d | 2011-12-06 14:36 | 2011-12-07 14:36 | 44 | 7.27d | 0d | nhanld | 8h |
| 46 | 1.3.1.2.5 | Self code review | 0.1d | 2011-12-07 14:36 | 2011-12-07 15:24 | 45 | 7.27d | 0d | nhanld | 0.8h |
| 47 | 1.3.1.2.6 | Peer code review | 0.1d | 2011-12-07 15:24 | 2011-12-07 16:12 | 46 | 7.27d | 0d | nhanld | 0.8h |
| 48 | 1.3.1.2.7 | Prepare UT script | 0.3d | 2011-12-07 16:12 | 2011-12-08 09:36 | 47 | 7.27d | 0d | nhanld | 2.4h |
| 49 | 1.3.1.2.8 | Perform UT and fix bug | 0.4d | 2011-12-08 09:36 | 2011-12-08 13:48 | 48 | 7.27d | 0d | nhanld | 3.2h |
| 50 | 1.3.1.3 | **Address lookup** | 3d | 2011-12-08 13:48 | 2011-12-13 13:48 |  | 3d |  | nhanld | 48h |
| 51 | 1.3.1.3.1 | Class, Sequence digaram | 0.5d | 2011-12-08 13:48 | 2011-12-09 08:48 | 49 | 7.27d | 0d | nhanld | 4h |
| 52 | 1.3.1.3.2 | Pseudo-code | 0.5d | 2011-12-09 08:48 | 2011-12-09 13:48 | 51 | 7.27d | 0d | nhanld | 4h |
| 53 | 1.3.1.3.3 | Prepare for Unit testing | 0.1d | 2011-12-09 13:48 | 2011-12-09 14:36 | 52 | 7.27d | 0d | nhanld | 0.8h |
| 54 | 1.3.1.3.4 | Code | 1d | 2011-12-09 14:36 | 2011-12-12 14:36 | 53 | 7.27d | 0d | nhanld | 8h |
| 55 | 1.3.1.3.5 | Self code review | 0.1d | 2011-12-12 14:36 | 2011-12-12 15:24 | 54 | 7.27d | 0d | nhanld | 0.8h |
| 56 | 1.3.1.3.6 | Peer code review | 0.1d | 2011-12-12 15:24 | 2011-12-12 16:12 | 55 | 7.27d | 0d | nhanld | 0.8h |
| 57 | 1.3.1.3.7 | Prepare UT script | 0.3d | 2011-12-12 16:12 | 2011-12-13 09:36 | 56 | 7.27d | 0d | nhanld | 2.4h |
| 58 | 1.3.1.3.8 | Perform UT and fix bug | 0.4d | 2011-12-13 09:36 | 2011-12-13 13:48 | 57 | 7.27d |  | nhanld | 3.2h |

Notes:
- 32: Logon logout, menu
- 41: (List, Add, Amend)
- 50: (List, Add, Amend)

| ID | WBS | Task | Duration | Start | Finish | Predecessors | Total slack | Free slack | Resources | Work |
| --- | --- | --- | --- | --- | --- | --- | --- | --- | --- | --- |
| 59 | 1.3.2 | **Iteration 2 - Organization Maintenance** | 12d | 2011-11-30 13:48 | 2011-12-16 13:48 |  | 4.27d |  |  | 240h |
| 60 | 1.3.2.1 | **Organization** | 3d | 2011-11-30 13:48 | 2011-12-05 13:48 |  | 4.27d |  | dungnm | 48h |
| 61 | 1.3.2.1.1 | Class, Sequence digaram | 0.5d | 2011-11-30 13:48 | 2011-12-01 08:48 | 33SS | 4.27d | 0d | dungnm | 4h |
| 62 | 1.3.2.1.2 | Pseudo-code | 0.5d | 2011-12-01 08:48 | 2011-12-01 13:48 | 61 | 4.27d | 0d | dungnm | 4h |
| 63 | 1.3.2.1.3 | Prepare for Unit testing | 0.1d | 2011-12-01 13:48 | 2011-12-01 14:36 | 62 | 4.27d | 0d | dungnm | 0.8h |
| 64 | 1.3.2.1.4 | Code | 1d | 2011-12-01 14:36 | 2011-12-02 14:36 | 63 | 4.27d | 0d | dungnm | 8h |
| 65 | 1.3.2.1.5 | Self code review | 0.1d | 2011-12-02 14:36 | 2011-12-02 15:24 | 64 | 4.27d | 0d | dungnm | 0.8h |
| 66 | 1.3.2.1.6 | Peer code review | 0.1d | 2011-12-02 15:24 | 2011-12-02 16:12 | 65 | 4.27d | 0d | dungnm | 0.8h |
| 67 | 1.3.2.1.7 | Prepare UT script | 0.3d | 2011-12-02 16:12 | 2011-12-05 09:36 | 66 | 4.27d | 0d | dungnm | 2.4h |
| 68 | 1.3.2.1.8 | Perform UT and fix bug | 0.4d | 2011-12-05 09:36 | 2011-12-05 13:48 | 67 | 4.27d | 0d | dungnm | 3.2h |
| 69 | 1.3.2.2 | **Supporting Materials** | 3d | 2011-12-05 13:48 | 2011-12-08 13:48 |  | 4.27d |  | dungnm | 48h |
| 70 | 1.3.2.2.1 | Class, Sequence digaram | 0.5d | 2011-12-05 13:48 | 2011-12-06 08:48 | 68 | 4.27d | 0d | dungnm | 4h |
| 71 | 1.3.2.2.2 | Pseudo-code | 0.5d | 2011-12-06 08:48 | 2011-12-06 13:48 | 70 | 4.27d | 0d | dungnm | 4h |
| 72 | 1.3.2.2.3 | Prepare for Unit testing | 0.1d | 2011-12-06 13:48 | 2011-12-06 14:36 | 71 | 4.27d | 0d | dungnm | 0.8h |
| 73 | 1.3.2.2.4 | Code | 1d | 2011-12-06 14:36 | 2011-12-07 14:36 | 72 | 4.27d | 0d | dungnm | 8h |
| 74 | 1.3.2.2.5 | Self code review | 0.1d | 2011-12-07 14:36 | 2011-12-07 15:24 | 73 | 4.27d | 0d | dungnm | 0.8h |
| 75 | 1.3.2.2.6 | Peer code review | 0.1d | 2011-12-07 15:24 | 2011-12-07 16:12 | 74 | 4.27d | 0d | dungnm | 0.8h |
| 76 | 1.3.2.2.7 | Prepare UT script | 0.3d | 2011-12-07 16:12 | 2011-12-08 09:36 | 75 | 4.27d | 0d | dungnm | 2.4h |
| 77 | 1.3.2.2.8 | Perform UT and fix bug | 0.4d | 2011-12-08 09:36 | 2011-12-08 13:48 | 76 | 4.27d | 0d | dungnm | 3.2h |
| 78 | 1.3.2.3 | **Directorates** | 3d | 2011-12-08 13:48 | 2011-12-13 13:48 |  | 4.27d |  | dungnm | 48h |
| 79 | 1.3.2.3.1 | Class, Sequence digaram | 0.5d | 2011-12-08 13:48 | 2011-12-09 08:48 | 77 | 4.27d | 0d | dungnm | 4h |
| 80 | 1.3.2.3.2 | Pseudo-code | 0.5d | 2011-12-09 08:48 | 2011-12-09 13:48 | 79 | 4.27d | 0d | dungnm | 4h |
| 81 | 1.3.2.3.3 | Prepare for Unit testing | 0.1d | 2011-12-09 13:48 | 2011-12-09 14:36 | 80 | 4.27d | 0d | dungnm | 0.8h |
| 82 | 1.3.2.3.4 | Code | 1d | 2011-12-09 14:36 | 2011-12-12 14:36 | 81 | 4.27d | 0d | dungnm | 8h |
| 83 | 1.3.2.3.5 | Self code review | 0.1d | 2011-12-12 14:36 | 2011-12-12 15:24 | 82 | 4.27d | 0d | dungnm | 0.8h |
| 84 | 1.3.2.3.6 | Peer code review | 0.1d | 2011-12-12 15:24 | 2011-12-12 16:12 | 83 | 4.27d | 0d | dungnm | 0.8h |
| 85 | 1.3.2.3.7 | Prepare UT script | 0.3d | 2011-12-12 16:12 | 2011-12-13 09:36 | 84 | 4.27d | 0d | dungnm | 2.4h |
| 86 | 1.3.2.3.8 | Perform UT and fix bug | 0.4d | 2011-12-13 09:36 | 2011-12-13 13:48 | 85 | 4.27d | 0d | dungnm | 3.2h |

Notes:
- 60: (List, Add, Amend)
- 69: (List, Add, Amend, Mark)
- 78: (List, Add, Amend, Mark)

| ID | WBS | Task | Duration | Start | Finish | Predecessors | Total slack | Free slack | Resources | Work |
| --- | --- | --- | --- | --- | --- | --- | --- | --- | --- | --- |
| 87 | 1.3.2.4 | **Department** | 3d | 2011-12-13 13:48 | 2011-12-16 13:48 |  | 4.27d |  | dungnm | 48h |
| 88 | 1.3.2.4.1 | Class, Sequence digaram | 0.5d | 2011-12-13 13:48 | 2011-12-14 08:48 | 86 | 4.27d | 0d | dungnm | 4h |
| 89 | 1.3.2.4.2 | Pseudo-code | 0.5d | 2011-12-14 08:48 | 2011-12-14 13:48 | 88 | 4.27d | 0d | dungnm | 4h |
| 90 | 1.3.2.4.3 | Prepare for Unit testing | 0.1d | 2011-12-14 13:48 | 2011-12-14 14:36 | 89 | 4.27d | 0d | dungnm | 0.8h |
| 91 | 1.3.2.4.4 | Code | 1d | 2011-12-14 14:36 | 2011-12-15 14:36 | 90 | 4.27d | 0d | dungnm | 8h |
| 92 | 1.3.2.4.5 | Self code review | 0.1d | 2011-12-15 14:36 | 2011-12-15 15:24 | 91 | 4.27d | 0d | dungnm | 0.8h |
| 93 | 1.3.2.4.6 | Peer code review | 0.1d | 2011-12-15 15:24 | 2011-12-15 16:12 | 92 | 4.27d | 0d | dungnm | 0.8h |
| 94 | 1.3.2.4.7 | Prepare UT script | 0.3d | 2011-12-15 16:12 | 2011-12-16 09:36 | 93 | 4.27d | 0d | dungnm | 2.4h |
| 95 | 1.3.2.4.8 | Perform UT and fix bug | 0.4d | 2011-12-16 09:36 | 2011-12-16 13:48 | 94 | 4.27d |  | dungnm | 3.2h |
| 96 | 1.3.2.5 | **Team** | 3d | 2011-11-30 13:48 | 2011-12-05 13:48 |  | 7.27d |  | hungnm | 48h |
| 97 | 1.3.2.5.1 | Class, Sequence digaram | 0.5d | 2011-11-30 13:48 | 2011-12-01 08:48 | 33SS | 7.27d | 0d | hungnm | 4h |
| 98 | 1.3.2.5.2 | Pseudo-code | 0.5d | 2011-12-01 08:48 | 2011-12-01 13:48 | 97 | 7.27d | 0d | hungnm | 4h |
| 99 | 1.3.2.5.3 | Prepare for Unit testing | 0.1d | 2011-12-01 13:48 | 2011-12-01 14:36 | 98 | 7.27d | 0d | hungnm | 0.8h |
| 100 | 1.3.2.5.4 | Code | 1d | 2011-12-01 14:36 | 2011-12-02 14:36 | 99 | 7.27d | 0d | hungnm | 8h |
| 101 | 1.3.2.5.5 | Self code review | 0.1d | 2011-12-02 14:36 | 2011-12-02 15:24 | 100 | 7.27d | 0d | hungnm | 0.8h |
| 102 | 1.3.2.5.6 | Peer code review | 0.1d | 2011-12-02 15:24 | 2011-12-02 16:12 | 101 | 7.27d | 0d | hungnm | 0.8h |
| 103 | 1.3.2.5.7 | Prepare UT script | 0.3d | 2011-12-02 16:12 | 2011-12-05 09:36 | 102 | 7.27d | 0d | hungnm | 2.4h |
| 104 | 1.3.2.5.8 | Perform UT and fix bug | 0.4d | 2011-12-05 09:36 | 2011-12-05 13:48 | 103 | 7.27d | 0d | hungnm | 3.2h |
| 105 | 1.3.3 | **Iteration 3 - Services, Programme** | 6d | 2011-12-05 13:48 | 2011-12-13 13:48 |  | 7.27d |  |  | 96h |
| 106 | 1.3.3.1 | **Service** | 3d | 2011-12-05 13:48 | 2011-12-08 13:48 |  | 7.27d |  | hungnm | 48h |
| 107 | 1.3.3.1.1 | Class, Sequence digaram | 0.5d | 2011-12-05 13:48 | 2011-12-06 08:48 | 104 | 7.27d | 0d | hungnm | 4h |
| 108 | 1.3.3.1.2 | Pseudo-code | 0.5d | 2011-12-06 08:48 | 2011-12-06 13:48 | 107 | 7.27d | 0d | hungnm | 4h |
| 109 | 1.3.3.1.3 | Prepare for Unit testing | 0.1d | 2011-12-06 13:48 | 2011-12-06 14:36 | 108 | 7.27d | 0d | hungnm | 0.8h |
| 110 | 1.3.3.1.4 | Code | 1d | 2011-12-06 14:36 | 2011-12-07 14:36 | 109 | 7.27d | 0d | hungnm | 8h |
| 111 | 1.3.3.1.5 | Self code review | 0.1d | 2011-12-07 14:36 | 2011-12-07 15:24 | 110 | 7.27d | 0d | hungnm | 0.8h |
| 112 | 1.3.3.1.6 | Peer code review | 0.1d | 2011-12-07 15:24 | 2011-12-07 16:12 | 111 | 7.27d | 0d | hungnm | 0.8h |
| 113 | 1.3.3.1.7 | Prepare UT script | 0.3d | 2011-12-07 16:12 | 2011-12-08 09:36 | 112 | 7.27d | 0d | hungnm | 2.4h |
| 114 | 1.3.3.1.8 | Perform UT and fix bug | 0.4d | 2011-12-08 09:36 | 2011-12-08 13:48 | 113 | 7.27d | 0d | hungnm | 3.2h |

Notes:
- 87: (List, Add, Amend, Mark)
- 96: (List, Add, Amend, Mark)
- 106: (List, Add, Amend, Mark)

| ID | WBS | Task | Duration | Start | Finish | Predecessors | Total slack | Free slack | Resources | Work |
| --- | --- | --- | --- | --- | --- | --- | --- | --- | --- | --- |
| 115 | 1.3.3.2 | **Programme** | 3d | 2011-12-08 13:48 | 2011-12-13 13:48 |  | 7.27d |  | hungnm | 48h |
| 116 | 1.3.3.2.1 | Class, Sequence digaram | 0.5d | 2011-12-08 13:48 | 2011-12-09 08:48 | 114 | 7.27d | 0d | hungnm | 4h |
| 117 | 1.3.3.2.2 | Pseudo-code | 0.5d | 2011-12-09 08:48 | 2011-12-09 13:48 | 116 | 7.27d | 0d | hungnm | 4h |
| 118 | 1.3.3.2.3 | Prepare for Unit testing | 0.1d | 2011-12-09 13:48 | 2011-12-09 14:36 | 117 | 7.27d | 0d | hungnm | 0.8h |
| 119 | 1.3.3.2.4 | Code | 1d | 2011-12-09 14:36 | 2011-12-12 14:36 | 118 | 7.27d | 0d | hungnm | 8h |
| 120 | 1.3.3.2.5 | Self code review | 0.1d | 2011-12-12 14:36 | 2011-12-12 15:24 | 119 | 7.27d | 0d | hungnm | 0.8h |
| 121 | 1.3.3.2.6 | Peer code review | 0.1d | 2011-12-12 15:24 | 2011-12-12 16:12 | 120 | 7.27d | 0d | hungnm | 0.8h |
| 122 | 1.3.3.2.7 | Prepare UT script | 0.3d | 2011-12-12 16:12 | 2011-12-13 09:36 | 121 | 7.27d | 0d | hungnm | 2.4h |
| 123 | 1.3.3.2.8 | Perform UT and fix bug | 0.4d | 2011-12-13 09:36 | 2011-12-13 13:48 | 122 | 7.27d |  | hungnm | 3.2h |
| 124 | 1.3.4 | **Iteration 4 -Trust Region, Trust District, Govermenet list, Type of Business lookup** | 12d | 2011-11-30 13:48 | 2011-12-16 13:48 |  | 0.02d |  |  | 192h |
| 125 | 1.3.4.1 | **Trust Region** | 3d | 2011-11-30 13:48 | 2011-12-05 13:48 |  | 0.02d |  | hant21 | 48h |
| 126 | 1.3.4.1.1 | Class, Sequence digaram | 0.5d | 2011-11-30 13:48 | 2011-12-01 08:48 | 33SS | 0.02d | 0d | hant21 | 4h |
| 127 | 1.3.4.1.2 | Pseudo-code | 0.5d | 2011-12-01 08:48 | 2011-12-01 13:48 | 126 | 0.02d | 0d | hant21 | 4h |
| 128 | 1.3.4.1.3 | Prepare for Unit testing | 0.1d | 2011-12-01 13:48 | 2011-12-01 14:36 | 127 | 0.02d | 0d | hant21 | 0.8h |
| 129 | 1.3.4.1.4 | Code | 1d | 2011-12-01 14:36 | 2011-12-02 14:36 | 128 | 0.02d | 0d | hant21 | 8h |
| 130 | 1.3.4.1.5 | Self code review | 0.1d | 2011-12-02 14:36 | 2011-12-02 15:24 | 129 | 4.27d | 0d | hant21 | 0.8h |
| 131 | 1.3.4.1.6 | Peer code review | 0.1d | 2011-12-02 15:24 | 2011-12-02 16:12 | 130 | 4.27d | 0d | hant21 | 0.8h |
| 132 | 1.3.4.1.7 | Prepare UT script | 0.3d | 2011-12-02 16:12 | 2011-12-05 09:36 | 131 | 4.27d | 0d | hant21 | 2.4h |
| 133 | 1.3.4.1.8 | Perform UT and fix bug | 0.4d | 2011-12-05 09:36 | 2011-12-05 13:48 | 132 | 4.27d | 0d | hant21 | 3.2h |
| 134 | 1.3.4.2 | **Trust District** | 3d | 2011-12-05 13:48 | 2011-12-08 13:48 |  | 0.02d |  | hant21 | 48h |
| 135 | 1.3.4.2.1 | Class, Sequence digaram | 0.5d | 2011-12-05 13:48 | 2011-12-06 08:48 | 133 | 4.27d | 0d | hant21 | 4h |
| 136 | 1.3.4.2.2 | Pseudo-code | 0.5d | 2011-12-06 08:48 | 2011-12-06 13:48 | 135 | 4.27d | 0d | hant21 | 4h |
| 137 | 1.3.4.2.3 | Prepare for Unit testing | 0.1d | 2011-12-06 13:48 | 2011-12-06 14:36 | 136 | 4.27d | 0d | hant21 | 0.8h |
| 138 | 1.3.4.2.4 | Code | 1d | 2011-12-06 14:36 | 2011-12-07 14:36 | 137 | 4.27d | 0d | hant21 | 8h |
| 139 | 1.3.4.2.5 | Self code review | 0.1d | 2011-12-07 14:36 | 2011-12-07 15:24 | 138 | 0.02d | 0d | hant21 | 0.8h |
| 140 | 1.3.4.2.6 | Peer code review | 0.1d | 2011-12-07 15:24 | 2011-12-07 16:12 | 139 | 4.27d | 0d | hant21 | 0.8h |
| 141 | 1.3.4.2.7 | Prepare UT script | 0.3d | 2011-12-07 16:12 | 2011-12-08 09:36 | 140 | 4.27d | 0d | hant21 | 2.4h |
| 142 | 1.3.4.2.8 | Perform UT and fix bug | 0.4d | 2011-12-08 09:36 | 2011-12-08 13:48 | 141 | 4.27d | 0d | hant21 | 3.2h |

Notes:
- 115: (List, Add, Amend, Mark)
- 125: (List, Add, Amend, Mark)
- 134: (List, Add, Amend, Mark)

| ID | WBS | Task | Duration | Start | Finish | Predecessors | Total slack | Free slack | Resources | Work |
| --- | --- | --- | --- | --- | --- | --- | --- | --- | --- | --- |
| 143 | 1.3.4.3 | **Gov Office** | 3d | 2011-12-08 13:48 | 2011-12-13 13:48 |  | 0.02d |  | hant21 | 48h |
| 144 | 1.3.4.3.1 | Class, Sequence digaram | 0.5d | 2011-12-08 13:48 | 2011-12-09 08:48 | 142 | 4.27d | 0d | hant21 | 4h |
| 145 | 1.3.4.3.2 | Pseudo-code | 0.5d | 2011-12-09 08:48 | 2011-12-09 13:48 | 144 | 4.27d | 0d | hant21 | 4h |
| 146 | 1.3.4.3.3 | Prepare for Unit testing | 0.1d | 2011-12-09 13:48 | 2011-12-09 14:36 | 145 | 4.27d | 0d | hant21 | 0.8h |
| 147 | 1.3.4.3.4 | Code | 1d | 2011-12-09 14:36 | 2011-12-12 14:36 | 146 | 4.27d | 0d | hant21 | 8h |
| 148 | 1.3.4.3.5 | Self code review | 0.1d | 2011-12-12 14:36 | 2011-12-12 15:24 | 147 | 4.27d | 0d | hant21 | 0.8h |
| 149 | 1.3.4.3.6 | Peer code review | 0.1d | 2011-12-12 15:24 | 2011-12-12 16:12 | 148 | 4.27d | 0d | hant21 | 0.8h |
| 150 | 1.3.4.3.7 | Prepare UT script | 0.3d | 2011-12-12 16:12 | 2011-12-13 09:36 | 149 | 4.27d | 0d | hant21 | 2.4h |
| 151 | 1.3.4.3.8 | Perform UT and fix bug | 0.4d | 2011-12-13 09:36 | 2011-12-13 13:48 | 150 | 4.27d | 0d | hant21 | 3.2h |
| 152 | 1.3.4.4 | **Type of Business lookup** | 3d | 2011-12-13 13:48 | 2011-12-16 13:48 |  | 0.02d |  | hant21 | 48h |
| 153 | 1.3.4.4.1 | Class, Sequence digaram | 0.5d | 2011-12-13 13:48 | 2011-12-14 08:48 | 151 | 4.27d | 0d | hant21 | 4h |
| 154 | 1.3.4.4.2 | Pseudo-code | 0.5d | 2011-12-14 08:48 | 2011-12-14 13:48 | 153 | 4.27d | 0d | hant21 | 4h |
| 155 | 1.3.4.4.3 | Prepare for Unit testing | 0.1d | 2011-12-14 13:48 | 2011-12-14 14:36 | 154 | 4.27d | 0d | hant21 | 0.8h |
| 156 | 1.3.4.4.4 | Code | 1d | 2011-12-14 14:36 | 2011-12-15 14:36 | 155 | 4.27d | 0d | hant21 | 8h |
| 157 | 1.3.4.4.5 | Self code review | 0.1d | 2011-12-15 14:36 | 2011-12-15 15:24 | 156, 153 | 4.27d | 0d | hant21 | 0.8h |
| 158 | 1.3.4.4.6 | Peer code review | 0.1d | 2011-12-15 15:24 | 2011-12-15 16:12 | 157 | 4.27d | 0d | hant21 | 0.8h |
| 159 | 1.3.4.4.7 | Prepare UT script | 0.3d | 2011-12-15 16:12 | 2011-12-16 09:36 | 158 | 4.27d | 0d | hant21 | 2.4h |
| 160 | 1.3.4.4.8 | Perform UT and fix bug | 0.4d | 2011-12-16 09:36 | 2011-12-16 13:48 | 159 | 4.27d |  | hant21 | 3.2h |
| 161 | 1.3.5 | **Iteration 5 -Premise, Facility, Volunteering, Minor Work Projects** | 12.02d | 2011-11-30 13:48 | 2011-12-16 13:57 |  | 0d |  |  | 192.32h |
| 162 | 1.3.5.1 | **Premise** | 3d | 2011-11-30 13:48 | 2011-12-05 13:48 |  | 0d |  | phongtv | 48h |
| 163 | 1.3.5.1.1 | Class, Sequence digaram | 0.5d | 2011-11-30 13:48 | 2011-12-01 08:48 | 33SS | 0d |  | phongtv | 4h |
| 164 | 1.3.5.1.2 | Pseudo-code | 0.5d | 2011-12-01 08:48 | 2011-12-01 13:48 | 163 | 0d |  | phongtv | 4h |
| 165 | 1.3.5.1.3 | Prepare for Unit testing | 0.1d | 2011-12-01 13:48 | 2011-12-01 14:36 | 164 | 0d |  | phongtv | 0.8h |
| 166 | 1.3.5.1.4 | Code | 1d | 2011-12-01 14:36 | 2011-12-02 14:36 | 165 | 0d |  | phongtv | 8h |
| 167 | 1.3.5.1.5 | Self code review | 0.1d | 2011-12-02 14:36 | 2011-12-02 15:24 | 166, 163 | 0d |  | phongtv | 0.8h |
| 168 | 1.3.5.1.6 | Peer code review | 0.1d | 2011-12-02 15:24 | 2011-12-02 16:12 | 167 | 0d |  | phongtv | 0.8h |
| 169 | 1.3.5.1.7 | Prepare UT script | 0.3d | 2011-12-02 16:12 | 2011-12-05 09:36 | 168 | 0d |  | phongtv | 2.4h |
| 170 | 1.3.5.1.8 | Perform UT and fix bug | 0.4d | 2011-12-05 09:36 | 2011-12-05 13:48 | 169 | 0d |  | phongtv | 3.2h |

Notes:
- 143: (List, Detail)
- 152: (List, Search)
- 162: (List, Add, Amend)

| ID | WBS | Task | Duration | Start | Finish | Predecessors | Total slack | Resources | Work |
| --- | --- | --- | --- | --- | --- | --- | --- | --- | --- |
| 171 | 1.3.5.2 | **Facility** | 3d | 2011-12-05 13:48 | 2011-12-08 13:48 |  | 0d | phongtv | 48h |
| 172 | 1.3.5.2.1 | Class, Sequence digaram | 0.5d | 2011-12-05 13:48 | 2011-12-06 08:48 | 170, 163SS | 0d | phongtv | 4h |
| 173 | 1.3.5.2.2 | Pseudo-code | 0.5d | 2011-12-06 08:48 | 2011-12-06 13:48 | 172 | 0d | phongtv | 4h |
| 174 | 1.3.5.2.3 | Prepare for Unit testing | 0.1d | 2011-12-06 13:48 | 2011-12-06 14:36 | 173 | 0d | phongtv | 0.8h |
| 175 | 1.3.5.2.4 | Code | 1d | 2011-12-06 14:36 | 2011-12-07 14:36 | 174 | 0d | phongtv | 8h |
| 176 | 1.3.5.2.5 | Self code review | 0.1d | 2011-12-07 14:36 | 2011-12-07 15:24 | 175, 172 | 0d | phongtv | 0.8h |
| 177 | 1.3.5.2.6 | Peer code review | 0.1d | 2011-12-07 15:24 | 2011-12-07 16:12 | 176 | 0d | phongtv | 0.8h |
| 178 | 1.3.5.2.7 | Prepare UT script | 0.3d | 2011-12-07 16:12 | 2011-12-08 09:36 | 177 | 0d | phongtv | 2.4h |
| 179 | 1.3.5.2.8 | Perform UT and fix bug | 0.4d | 2011-12-08 09:36 | 2011-12-08 13:48 | 178 | 0d | phongtv | 3.2h |
| 180 | 1.3.5.3 | **Volunteering** | 3d | 2011-12-08 13:48 | 2011-12-13 13:48 |  | 0d | phongtv | 48h |
| 181 | 1.3.5.3.1 | Class, Sequence digaram | 0.5d | 2011-12-08 13:48 | 2011-12-09 08:48 | 179, 163SS | 0d | phongtv | 4h |
| 182 | 1.3.5.3.2 | Pseudo-code | 0.5d | 2011-12-09 08:48 | 2011-12-09 13:48 | 181 | 0d | phongtv | 4h |
| 183 | 1.3.5.3.3 | Prepare for Unit testing | 0.1d | 2011-12-09 13:48 | 2011-12-09 14:36 | 182 | 0d | phongtv | 0.8h |
| 184 | 1.3.5.3.4 | Code | 1d | 2011-12-09 14:36 | 2011-12-12 14:36 | 183 | 0d | phongtv | 8h |
| 185 | 1.3.5.3.5 | Self code review | 0.1d | 2011-12-12 14:36 | 2011-12-12 15:24 | 184, 181 | 0d | phongtv | 0.8h |
| 186 | 1.3.5.3.6 | Peer code review | 0.1d | 2011-12-12 15:24 | 2011-12-12 16:12 | 185 | 0d | phongtv | 0.8h |
| 187 | 1.3.5.3.7 | Prepare UT script | 0.3d | 2011-12-12 16:12 | 2011-12-13 09:36 | 186 | 0d | phongtv | 2.4h |
| 188 | 1.3.5.3.8 | Perform UT and fix bug | 0.4d | 2011-12-13 09:36 | 2011-12-13 13:48 | 187 | 0d | phongtv | 3.2h |
| 189 | 1.3.5.4 | **Minor Work Projects** | 3.02d | 2011-12-13 13:48 | 2011-12-16 13:57 |  | 0d | phongtv | 48.32h |
| 190 | 1.3.5.4.1 | Class, Sequence digaram | 0.5d | 2011-12-13 13:48 | 2011-12-14 08:48 | 188, 163SS | 0d | phongtv | 4h |
| 191 | 1.3.5.4.2 | Pseudo-code | 0.5d | 2011-12-14 08:48 | 2011-12-14 13:48 | 190 | 0d | phongtv | 4h |
| 192 | 1.3.5.4.3 | Prepare for Unit testing | 0.1d | 2011-12-14 13:48 | 2011-12-14 14:36 | 191 | 0d | phongtv | 0.8h |
| 193 | 1.3.5.4.4 | Code | 1d | 2011-12-14 14:36 | 2011-12-15 14:36 | 192 | 0d | phongtv | 8h |
| 194 | 1.3.5.4.5 | Self code review | 0.1d | 2011-12-15 14:36 | 2011-12-15 15:24 | 193, 190 | 0d | phongtv | 0.8h |
| 195 | 1.3.5.4.6 | Peer code review | 0.12d | 2011-12-15 15:24 | 2011-12-15 16:21 | 194 | 0d | phongtv | 0.96h |
| 196 | 1.3.5.4.7 | Prepare UT script | 0.3d | 2011-12-15 16:21 | 2011-12-16 09:45 | 195 | 0d | phongtv | 2.4h |
| 197 | 1.3.5.4.8 | Perform UT and fix bug | 0.4d | 2011-12-16 09:45 | 2011-12-16 13:57 | 196 | 0d | phongtv | 3.2h |

Notes:
- 171: (List, Add, Amend, Mark)
- 180: (List, Add, Amend, Mark)
- 189: (List, Add, Amend, Mark)

| ID | WBS | Task | Duration | Start | Finish | Predecessors | Total slack | Resources | Work |
| --- | --- | --- | --- | --- | --- | --- | --- | --- | --- |
| 199 | 1.4 | **Integrate modules** | 4.25d | 2011-12-16 13:57 | 2011-12-22 15:57 |  | 0d |  | 128h |
| 200 | 1.4.1 | Merge modules | 1d | 2011-12-16 13:57 | 2011-12-19 13:57 | 197 | 0d | nhanld | 8h |
| 201 | 1.4.2 | System test | 1.25d | 2011-12-19 13:57 | 2011-12-20 15:57 | 200 | 0d | phongtv; hant21; hungnm; dungnm | 40h |
| 202 | 1.4.3 | **Help document** | 2d | 2011-12-20 15:57 | 2011-12-22 15:57 |  | 0d |  | 80h |
| 203 | 1.4.3.1 | Write help documents | 2d | 2011-12-20 15:57 | 2011-12-22 15:57 | 201 | 0d | phongtv; hant21; hungnm; dungnm; nhanld | 80h |
